# HRST_Cronograma do Projeto INTEGRA RH

Schedule from MS Project, 2016-03-15 to 2016-10-03, status date 2016-03-28, costs in R$, A marks actual dates.
DSI - NewTec

## Calendars

- Padrão: Mon-Fri 09:00-12:00, 13:00-18:00; Sat-Sun off. Exceptions (off unless hours are given): 2016-04-08 (Aniversário de Cuibá), 2016-04-21 (Tiradentes).

## Resources

| Resource | Rate |
| --- | --- |
| Gerente de Projeto | 1 |
| Consultor HCM - PY | 1 |
| Consultor HCM - PA | 1 |
| Gerente Tecnico HCM | 1 |
| Consultor HCM - PY, Consultor HCM - PA | 1 |
| Desenvolvedor ABAP HCM | 1 |
| Consultor eSocial | 1 |
| Magno Calixto | 1 |
| Magno Calixto, Marcelo Telles | 1 |
| Marcelo Telles | 1 |
| Adriano Ishibira | 1 |
| Jefferson Souza | 1 |
| KeyUser 2 | 1 |
| Rodney Amancio | 1 |
| Magno Calixto, KeyUser | 1 |
| PMO-William | 1 |
| PMO-William Lima | 1 |
| William Lima - PMO | 1 |
| KeyUser | 1 |
| Gerente de Projeto, Sponsor | 1 |
| Marcio Santos | 1 |
| Gestor Técnico | 1 |
| Basis HTB | 1 |
| Mariana Camargo | 1 |
| Manoel Amorim | 1 |
| Joana Ragnelli | 1 |
| Basis AMAGGI | 1 |
| ABAP HCM | 1 |
| Joana Ragnelli, KeyUser | 1 |
| Basis Cliente | 1 |
| Paloma Oliveira | 1 |
| Gustavo Barison | 1 |
| Paloma Oliveira, Carolina Xavier | 1 |
| Carolina Xavier | 1 |
| Consultor SFSF | 1 |
| ABAP SFSF | 1 |
| Consultor SFSF II | 1 |
| Consultor SFSF CM | 1 |
| Consultor SFSF LMS | 1 |

## Schedule

| ID | WBS | Task | Type | Duration | Start | Finish | Predecessors | Complete | Remaining | Baseline start | Baseline finish | Baseline duration | Total slack | Free slack | Constraint | Resources | Work | Actual work | Cost | Baseline cost | Actual cost | % Planejado | % Realizado | .SPI. |
| --- | --- | --- | --- | --- | --- | --- | --- | --- | --- | --- | --- | --- | --- | --- | --- | --- | --- | --- | --- | --- | --- | --- | --- | --- |
| 1 | 1 | **HRST_Cronograma eSocial** |  | 142d | 2016-03-15 A | 2016-10-03 |  | 8% | 130.83d | 2016-03-15 | 2016-10-03 | 145d | 1d |  |  |  | 1440h | 112h | 1,440 | 1,464 | 112 | 5% | 8% | 1,4 |
| 2 | 1.1 | **Fase 1 - Preparação do Projeto** |  | 14d | 2016-03-15 A | 2016-04-01 A |  | 100% |  | 2016-03-15 | 2016-04-01 | 14d |  |  |  |  | 112h | 112h | 112 | 112 | 112 | 71% | 100% | 1,4 |
| 3 | 1.1.1 | Kick-off |  | 1d | 2016-03-15 A | 2016-03-15 A |  | 100% |  | 2016-03-15 | 2016-03-15 | 1d |  |  | start no earlier than 2016-03-15 | Gerente de Projeto | 8h | 8h | 8 | 8 | 8 | 100% | 100% |  |
| 4 | 1.1.2 | Documentação de Planejamento |  | 10d | 2016-03-16 A | 2016-03-29 A | 3 | 100% |  | 2016-03-16 | 2016-03-29 | 10d |  |  |  | Gerente de Projeto | 80h | 80h | 80 | 80 | 80 | 90% | 100% | 1,11 |
| 5 | 1.1.3 | Cronograma Detalhado do Projeto |  | 3d | 2016-03-30 A | 2016-04-01 A | 4 | 100% |  | 2016-03-30 | 2016-04-01 | 3d |  |  |  | Gerente de Projeto | 24h | 24h | 24 | 24 | 24 | 0% | 100% |  |
| 6 | 1.2 | Termo de Aceite Fase 1 | milestone | 0d | 2016-04-01 A | 2016-04-01 | 5 | 75% | 0d | 2016-04-01 | 2016-04-01 | 0d | 129d |  |  | Gerente de Projeto |  |  |  |  |  | 0% | 75% |  |
| 7 | 1.3 | **Fase 2 - Análise e Desenho da Funcionalidade** |  | 25d | 2016-03-28 | 2016-05-03 |  |  |  | 2016-04-04 | 2016-05-06 | 25d | 5d |  |  |  | 208h |  | 208 | 208 |  | 0% | 0% |  |
| 8 | 1.3.1 | Elaboração do Workbook Completo |  | 20d | 2016-03-28 | 2016-04-26 |  |  |  | 2016-04-04 | 2016-04-29 | 20d | 5d | 0d | start no earlier than 2016-03-28 | Joana Ragnelli | 160h |  | 160 | 160 |  | 0% | 0% |  |
| 9 | 1.3.2 | Aprovação do Workbook |  | 5d | 2016-04-27 | 2016-05-03 | 8 |  |  | 2016-05-02 | 2016-05-06 | 5d | 5d | 0d |  | KeyUser | 40h |  | 40 | 40 |  | 0% | 0% |  |
| 10 | 1.3.3 | Apresentação do Desenho Conceptual e Gap Analysis |  | 1d | 2016-04-27 | 2016-04-27 | 8 |  |  | 2016-05-02 | 2016-05-02 | 1d | 113d |  |  | Joana Ragnelli | 8h |  | 8 | 8 |  | 0% | 0% |  |
| 11 | 1.4 | Termo de Aceite Fase 2 | milestone | 0d | 2016-05-03 | 2016-05-03 | 9 |  |  | 2016-05-06 | 2016-05-06 | 0d | 5d | 0d |  | Gerente de Projeto |  |  |  |  |  | 0% | 0% |  |
| 12 | 1.5 | **Fase 3 - Realização da Parametrização e Desenvolvimentos** |  | 99d | 2016-05-04 | 2016-09-19 |  |  |  | 2016-05-09 | 2016-09-19 | 96d | 5d |  |  |  | 968h |  | 968 | 968 |  | 0% | 0% |  |
| 13 | 1.5.1 | **Atualização dos Componentes SAP HCM - eSocial** |  | 5d | 2016-05-04 | 2016-05-10 |  |  |  | 2016-05-09 | 2016-05-13 | 5d | 5d |  |  |  | 40h |  | 40 | 40 |  | 0% | 0% |  |
| 14 | 1.5.1.1 | Aplicação de SAP Suporte Package |  | 5d | 2016-05-04 | 2016-05-10 | 11 |  |  | 2016-05-09 | 2016-05-13 | 5d | 5d | 0d | start no earlier than 2016-04-04 | Basis AMAGGI | 40h |  | 40 | 40 |  | 0% | 0% |  |
| 15 | 1.5.2 | **Parametrização dos Eventos Standards** |  | 41d | 2016-05-11 | 2016-07-06 |  |  |  | 2016-05-16 | 2016-07-11 | 41d | 5d |  |  |  | 344h |  | 344 | 344 |  | 0% | 0% |  |
| 16 | 1.5.2.1 | S-1000 – Informações do Empregador/Contribuinte |  | 2d | 2016-05-11 | 2016-05-12 | 14 |  |  | 2016-05-16 | 2016-05-17 | 2d | 5d | 0d |  | Joana Ragnelli | 16h |  | 16 | 16 |  | 0% | 0% |  |
| 17 | 1.5.2.2 | S-1005 – Tabela de Estabelecimentos e Obras de Construção Civil |  | 2d | 2016-05-13 | 2016-05-16 | 16 |  |  | 2016-05-18 | 2016-05-19 | 2d | 5d | 0d |  | Joana Ragnelli | 16h |  | 16 | 16 |  | 0% | 0% |  |
| 18 | 1.5.2.3 | S-1010 – Tabela de Rubricas |  | 1d | 2016-05-17 | 2016-05-17 | 17 |  |  | 2016-05-20 | 2016-05-20 | 1d | 5d | 0d |  | Joana Ragnelli | 8h |  | 8 | 8 |  | 0% | 0% |  |
| 19 | 1.5.2.4 | S-1020 – Tabela de Lotações Tributárias |  | 1d | 2016-05-18 | 2016-05-18 | 18 |  |  | 2016-05-23 | 2016-05-23 | 1d | 5d | 0d |  | Joana Ragnelli | 8h |  | 8 | 8 |  | 0% | 0% |  |
| 20 | 1.5.2.5 | S-1030 – Tabela de Cargos/Empregos Públicos |  | 1d | 2016-05-19 | 2016-05-19 | 19 |  |  | 2016-05-24 | 2016-05-24 | 1d | 5d | 0d |  | Joana Ragnelli | 8h |  | 8 | 8 |  | 0% | 0% |  |
| 21 | 1.5.2.6 | S-1050 – Tabela de Horários/Turnos de Trabalho |  | 2d | 2016-05-20 | 2016-05-23 | 20 |  |  | 2016-05-25 | 2016-05-26 | 2d | 5d | 0d |  | Joana Ragnelli | 16h |  | 16 | 16 |  | 0% | 0% |  |
| 22 | 1.5.2.7 | S-1200 – Remuneração do Trabalhador |  | 2d | 2016-05-24 | 2016-05-25 | 21 |  |  | 2016-05-27 | 2016-05-30 | 2d | 5d | 0d |  | Joana Ragnelli | 16h |  | 16 | 16 |  | 0% | 0% |  |
| 23 | 1.5.2.8 | S-1210 – Pagamentos de Rendimentos do Trabalho |  | 2d | 2016-05-26 | 2016-05-27 | 22 |  |  | 2016-05-31 | 2016-06-01 | 2d | 91d |  |  | Joana Ragnelli | 16h |  | 16 | 16 |  | 0% | 0% |  |
| 24 | 1.5.2.9 | S-1280 – Informações Complementares aos Eventos Periódicos |  | 2d | 2016-05-26 | 2016-05-27 | 22 |  |  | 2016-05-31 | 2016-06-01 | 2d | 5d | 0d |  | Joana Ragnelli | 16h |  | 16 | 16 |  | 0% | 0% |  |
| 25 | 1.5.2.10 | S-1298 – Reabertura dos Eventos Periódicos |  | 2d | 2016-05-30 | 2016-05-31 | 24 |  |  | 2016-06-02 | 2016-06-03 | 2d | 5d | 0d |  | Joana Ragnelli | 16h |  | 16 | 16 |  | 0% | 0% |  |
| 26 | 1.5.2.11 | S-1299 – Fechamento dos Eventos Periódicos |  | 2d | 2016-06-01 | 2016-06-02 | 25 |  |  | 2016-06-06 | 2016-06-07 | 2d | 5d | 0d |  | Joana Ragnelli | 16h |  | 16 | 16 |  | 0% | 0% |  |
| 27 | 1.5.2.12 | S-1300 – Contribuição Sindical Patronal |  | 2d | 2016-06-03 | 2016-06-06 | 26 |  |  | 2016-06-08 | 2016-06-09 | 2d | 5d | 0d |  | Joana Ragnelli | 16h |  | 16 | 16 |  | 0% | 0% |  |
| 28 | 1.5.2.13 | S-2100 – Cadastramento Inicial do Vínculo |  | 2d | 2016-06-07 | 2016-06-08 | 27 |  |  | 2016-06-10 | 2016-06-13 | 2d | 5d | 0d |  | Joana Ragnelli | 16h |  | 16 | 16 |  | 0% | 0% |  |
| 29 | 1.5.2.14 | S-2190 – Admissão de Trabalhador – Registro Preliminar |  | 2d | 2016-06-09 | 2016-06-10 | 28 |  |  | 2016-06-14 | 2016-06-15 | 2d | 5d | 0d |  | Joana Ragnelli | 16h |  | 16 | 16 |  | 0% | 0% |  |
| 30 | 1.5.2.15 | S-2200 – Admissão de Trabalhador |  | 2d | 2016-06-13 | 2016-06-14 | 29 |  |  | 2016-06-16 | 2016-06-17 | 2d | 5d | 0d |  | Joana Ragnelli | 16h |  | 16 | 16 |  | 0% | 0% |  |
| 31 | 1.5.2.16 | S-2205 – Alteração de Dados Cadastrais do Trabalhador |  | 2d | 2016-06-15 | 2016-06-16 | 30 |  |  | 2016-06-20 | 2016-06-21 | 2d | 5d | 0d |  | Joana Ragnelli | 16h |  | 16 | 16 |  | 0% | 0% |  |
| 32 | 1.5.2.17 | S-2206 – Alteração de Contrato de Trabalho |  | 2d | 2016-06-17 | 2016-06-20 | 31 |  |  | 2016-06-22 | 2016-06-23 | 2d | 5d | 0d |  | Joana Ragnelli | 16h |  | 16 | 16 |  | 0% | 0% |  |
| 33 | 1.5.2.18 | S-2230 – Afastamento Temporário |  | 2d | 2016-06-21 | 2016-06-22 | 32 |  |  | 2016-06-24 | 2016-06-27 | 2d | 5d | 0d |  | Joana Ragnelli | 16h |  | 16 | 16 |  | 0% | 0% |  |
| 34 | 1.5.2.19 | S-2250 – Aviso Prévio |  | 2d | 2016-06-23 | 2016-06-24 | 33 |  |  | 2016-06-28 | 2016-06-29 | 2d | 5d | 0d |  | Joana Ragnelli | 16h |  | 16 | 16 |  | 0% | 0% |  |
| 35 | 1.5.2.20 | S-2298 – Reintegração |  | 2d | 2016-06-27 | 2016-06-28 | 34 |  |  | 2016-06-30 | 2016-07-01 | 2d | 5d | 0d |  | Joana Ragnelli | 16h |  | 16 | 16 |  | 0% | 0% |  |
| 36 | 1.5.2.21 | S-2299 – Desligamento |  | 2d | 2016-06-29 | 2016-06-30 | 35 |  |  | 2016-07-04 | 2016-07-05 | 2d | 5d | 0d |  | Joana Ragnelli | 16h |  | 16 | 16 |  | 0% | 0% |  |
| 37 | 1.5.2.22 | S-2300 – Trabalhador Sem Vínculo - Início |  | 1d | 2016-07-01 | 2016-07-01 | 36 |  |  | 2016-07-06 | 2016-07-06 | 1d | 5d | 0d |  | Joana Ragnelli | 8h |  | 8 | 8 |  | 0% | 0% |  |
| 38 | 1.5.2.23 | S-2305 – Trabalhador Sem Vínculo - Alteração Contratual |  | 1d | 2016-07-04 | 2016-07-04 | 37 |  |  | 2016-07-07 | 2016-07-07 | 1d | 5d | 0d |  | Joana Ragnelli | 8h |  | 8 | 8 |  | 0% | 0% |  |
| 39 | 1.5.2.24 | S-2399 – Trabalhador Sem Vínculo - Término |  | 1d | 2016-07-05 | 2016-07-05 | 38 |  |  | 2016-07-08 | 2016-07-08 | 1d | 5d | 0d |  | Joana Ragnelli | 8h |  | 8 | 8 |  | 0% | 0% |  |
| 40 | 1.5.2.25 | S-3000 – Exclusão de Eventos |  | 1d | 2016-07-06 | 2016-07-06 | 39 |  |  | 2016-07-11 | 2016-07-11 | 1d | 5d | 0d |  | Joana Ragnelli | 8h |  | 8 | 8 |  | 0% | 0% |  |

| ID | WBS | Task | Type | Duration | Start | Finish | Predecessors | Baseline start | Baseline finish | Baseline duration | Total slack | Free slack | Constraint | Resources | Work | Cost | Baseline cost | % Planejado | % Realizado |
| --- | --- | --- | --- | --- | --- | --- | --- | --- | --- | --- | --- | --- | --- | --- | --- | --- | --- | --- | --- |
| 41 | 1.5.3 | **Parametrização dos Aceleradores HR Solutions (Desenvolvimentos)** |  | 12d | 2016-07-07 | 2016-07-22 |  | 2016-07-12 | 2016-07-27 | 12d | 5d |  |  |  | 96h | 96 | 96 | 0% | 0% |
| 42 | 1.5.3.1 | S-1060 – Tabela de Ambientes de Trabalho |  | 1d | 2016-07-07 | 2016-07-07 | 40 | 2016-07-12 | 2016-07-12 | 1d | 5d | 0d |  | Joana Ragnelli | 8h | 8 | 8 | 0% | 0% |
| 43 | 1.5.3.2 | S-1070 – Tabela de Processos Administrativos/Judiciais |  | 1d | 2016-07-08 | 2016-07-08 | 42 | 2016-07-13 | 2016-07-13 | 1d | 5d | 0d |  | Joana Ragnelli | 8h | 8 | 8 | 0% | 0% |
| 44 | 1.5.3.3 | S-1220 – Pagamentos a Beneficiários Não Identificados |  | 1d | 2016-07-11 | 2016-07-11 | 43 | 2016-07-14 | 2016-07-14 | 1d | 5d | 0d |  | Joana Ragnelli | 8h | 8 | 8 | 0% | 0% |
| 45 | 1.5.3.4 | S-2210 – Comunicação de Acidente de Trabalho |  | 1d | 2016-07-12 | 2016-07-12 | 44 | 2016-07-15 | 2016-07-15 | 1d | 5d | 0d |  | Joana Ragnelli | 8h | 8 | 8 | 0% | 0% |
| 46 | 1.5.3.5 | S-2220 – Monitoramento da Saúde do Trabalhador |  | 1d | 2016-07-13 | 2016-07-13 | 45 | 2016-07-18 | 2016-07-18 | 1d | 5d | 0d |  | Joana Ragnelli | 8h | 8 | 8 | 0% | 0% |
| 47 | 1.5.3.6 | S-2240 – Condições Ambientais do Trabalho - Fatores de Risco |  | 1d | 2016-07-14 | 2016-07-14 | 46 | 2016-07-19 | 2016-07-19 | 1d | 5d | 0d |  | Joana Ragnelli | 8h | 8 | 8 | 0% | 0% |
| 48 | 1.5.3.7 | S-2241 – Insalubridade, Periculosidade e Aposentadoria Especial |  | 1d | 2016-07-15 | 2016-07-15 | 47 | 2016-07-20 | 2016-07-20 | 1d | 5d | 0d |  | Joana Ragnelli | 8h | 8 | 8 | 0% | 0% |
| 49 | 1.5.3.8 | S-4000 – Solicitação de Totalização de Bases e Contribuições |  | 1d | 2016-07-18 | 2016-07-18 | 48 | 2016-07-21 | 2016-07-21 | 1d | 5d | 0d |  | Joana Ragnelli | 8h | 8 | 8 | 0% | 0% |
| 50 | 1.5.3.9 | S-5001 – Totalização da Contribuição Previdenciária por Trabalhador |  | 1d | 2016-07-19 | 2016-07-19 | 49 | 2016-07-22 | 2016-07-22 | 1d | 5d | 0d |  | Joana Ragnelli | 8h | 8 | 8 | 0% | 0% |
| 51 | 1.5.3.10 | S-5002 – Totalização do IRRF por Trabalhador |  | 1d | 2016-07-20 | 2016-07-20 | 50 | 2016-07-25 | 2016-07-25 | 1d | 5d | 0d |  | Joana Ragnelli | 8h | 8 | 8 | 0% | 0% |
| 52 | 1.5.3.11 | S-5011 – Totalização da Contribuição Previdenciária por Empregador |  | 1d | 2016-07-21 | 2016-07-21 | 51 | 2016-07-26 | 2016-07-26 | 1d | 5d | 0d |  | Joana Ragnelli | 8h | 8 | 8 | 0% | 0% |
| 53 | 1.5.3.12 | S-5012 – Totalização do IRRF por Empregador |  | 1d | 2016-07-22 | 2016-07-22 | 52 | 2016-07-27 | 2016-07-27 | 1d | 5d | 0d |  | Joana Ragnelli | 8h | 8 | 8 | 0% | 0% |
| 54 | 1.5.4 | Definição das Planilhas de Carga (Layout) |  | 2d | 2016-07-25 | 2016-07-26 | 53 | 2016-07-28 | 2016-07-29 | 2d | 5d | 0d | start no earlier than 2016-04-11 | Joana Ragnelli | 16h | 16 | 16 | 0% | 0% |
| 55 | 1.5.5 | Apresentação das cargas de dados necessárias |  | 2d | 2016-07-27 | 2016-07-28 | 54 | 2016-08-01 | 2016-08-02 | 2d | 5d | 0d |  | Joana Ragnelli | 16h | 16 | 16 | 0% | 0% |
| 56 | 1.5.6 | Definição e Desenho dos Perfis de Acesso |  | 2d | 2016-07-29 | 2016-08-01 | 55 | 2016-08-03 | 2016-08-04 | 2d | 5d | 0d |  | Joana Ragnelli | 16h | 16 | 16 | 0% | 0% |
| 57 | 1.5.7 | Desenvolvimento dos Perfis de Acesso eSocial |  | 5d | 2016-08-02 | 2016-08-08 | 56 | 2016-08-05 | 2016-08-11 | 5d | 5d | 0d |  | Basis HTB | 40h | 40 | 40 | 0% | 0% |
| 58 | 1.5.8 | Elaboração do Script de Testes Integrados |  | 2d | 2016-08-09 | 2016-08-10 | 57 | 2016-08-12 | 2016-08-15 | 2d | 5d | 0d |  | Joana Ragnelli | 16h | 16 | 16 | 0% | 0% |
| 59 | 1.5.9 | Execução do Testes Unitários (sem perfil de acesso) |  | 5d | 2016-08-11 | 2016-08-17 | 58 | 2016-08-16 | 2016-08-22 | 5d | 5d | 0d |  | Joana Ragnelli | 40h | 40 | 40 | 0% | 0% |
| 60 | 1.5.10 | Execução de Testes Integrados (com perfil de acesso) |  | 5d | 2016-08-18 | 2016-08-24 | 59 | 2016-08-23 | 2016-08-29 | 5d | 5d | 0d |  | Joana Ragnelli, KeyUser | 40h | 40 | 40 | 0% | 0% |
| 61 | 1.5.11 | Correção e otimização dos testes |  | 2d | 2016-08-25 | 2016-08-26 | 60 | 2016-08-30 | 2016-08-31 | 2d | 5d | 0d |  | Joana Ragnelli | 16h | 16 | 16 | 0% | 0% |
| 62 | 1.5.12 | Desenvolvimentos dos Manuais para EndUser (BPP) |  | 5d | 2016-08-29 | 2016-09-02 | 61 | 2016-09-01 | 2016-09-07 | 5d | 5d | 0d |  | Joana Ragnelli | 40h | 40 | 40 | 0% | 0% |
| 63 | 1.5.13 | **Desenvolvimento da Mensageria SAP PI** |  | 31d | 2016-08-08 | 2016-09-19 |  | 2016-08-08 | 2016-09-19 | 31d | 0d |  |  |  | 248h | 248 | 248 | 0% | 0% |
| 64 | 1.5.13.1 | Definição do Landscape e Infraestrutura | manual | 2d | 2016-08-08 | 2016-08-09 | 40 | 2016-08-08 | 2016-08-09 | 2d |  |  |  | Rodney Amancio | 16h | 16 | 16 | 0% | 0% |
| 65 | 1.5.13.2 | Desenvolvimento da Mensageria |  | 25d | 2016-08-10 | 2016-09-13 | 64 | 2016-08-10 | 2016-09-13 | 25d | 10d | 0d |  | ABAP HCM | 200h | 200 | 200 | 0% | 0% |
| 66 | 1.5.13.3 | Testes Unitarios da Mensageria |  | 2d | 2016-09-14 | 2016-09-15 | 65 | 2016-09-14 | 2016-09-15 | 2d | 10d | 0d |  | Joana Ragnelli | 16h | 16 | 16 | 0% | 0% |
| 67 | 1.5.13.4 | Testes Integrados da Mensageria |  | 2d | 2016-09-16 | 2016-09-19 | 66 | 2016-09-16 | 2016-09-19 | 2d | 10d |  |  | Joana Ragnelli, KeyUser | 16h | 16 | 16 | 0% | 0% |
| 68 | 1.6 | Termo de Aceite Fase 3 | milestone | 0d | 2016-09-02 | 2016-09-02 | 62 | 2016-09-07 | 2016-09-07 | 0d | 21d |  |  | Gerente de Projeto |  |  |  | 0% | 0% |

| ID | WBS | Task | Type | Duration | Start | Finish | Predecessors | Complete | Remaining | Baseline start | Baseline finish | Baseline duration | Total slack | Free slack | Constraint | Resources | Work | Actual work | Cost | Baseline cost | Actual cost | % Planejado | % Realizado | .SPI. |
| --- | --- | --- | --- | --- | --- | --- | --- | --- | --- | --- | --- | --- | --- | --- | --- | --- | --- | --- | --- | --- | --- | --- | --- | --- |
| 69 | 1.7 | **Fase 4 - Preparação Final** |  | 16d | 2016-09-05 | 2016-09-26 |  |  |  | 2016-09-08 | 2016-10-03 | 18d | 5d |  |  |  | 148h |  | 148 | 172 |  | 0% | 0% |  |
| 70 | 1.7.1 | **Treinamento de Usuários Finais** |  | 8d | 2016-09-05 | 2016-09-14 |  |  |  | 2016-09-08 | 2016-09-19 | 8d | 5d |  |  |  | 64h |  | 64 | 64 |  | 0% | 0% |  |
| 71 | 1.7.1.1 | Preparação do Material de Treinamento |  | 5d | 2016-09-05 | 2016-09-09 | 62 |  |  | 2016-09-08 | 2016-09-14 | 5d | 5d | 0d |  | Joana Ragnelli | 40h |  | 40 | 40 |  | 0% | 0% |  |
| 72 | 1.7.1.2 | Preparação do Ambiente QAS 700 para Treinamento |  | 1d | 2016-09-12 | 2016-09-12 | 71 |  |  | 2016-09-15 | 2016-09-15 | 1d | 5d | 0d |  | Joana Ragnelli | 8h |  | 8 | 8 |  | 0% | 0% |  |
| 73 | 1.7.1.3 | Realização do Treinamento do SAP eSocial |  | 2d | 2016-09-13 | 2016-09-14 | 72 |  |  | 2016-09-16 | 2016-09-19 | 2d | 5d | 0d |  | Joana Ragnelli | 16h |  | 16 | 16 |  | 0% | 0% |  |
| 74 | 1.7.2 | **Plano de Cut-Over** |  | 8d | 2016-09-15 | 2016-09-26 |  |  |  | 2016-09-20 | 2016-10-03 | 10d | 5d |  |  |  | 84h |  | 84 | 108 |  | 0% | 0% |  |
| 75 | 1.7.2.1 | Definição do Plano de Cut-Over |  | 1d | 2016-09-15 | 2016-09-15 | 73 |  |  | 2016-09-20 | 2016-09-20 | 1d | 5d | 0d |  | Joana Ragnelli | 8h |  | 8 | 8 |  | 0% | 0% |  |
| 76 | 1.7.2.2 | Elaboração das planilhas de carga de dados (LSMW) |  | 2d | 2016-09-16 | 2016-09-19 | 75 |  |  | 2016-09-21 | 2016-09-23 | 3d | 5d | 0d |  | KeyUser | 16h |  | 16 | 24 |  | 0% | 0% |  |
| 77 | 1.7.2.3 | Execução das cargas de dados |  | 2d | 2016-09-20 | 2016-09-21 | 76 |  |  | 2016-09-26 | 2016-09-28 | 3d | 5d | 0d |  | KeyUser; Joana Ragnelli | 32h |  | 32 | 48 |  | 0% | 0% |  |
| 78 | 1.7.2.4 | Validação de dados carregados / migrados / transferidos |  | 2d | 2016-09-22 | 2016-09-23 | 77 |  |  | 2016-09-29 | 2016-09-30 | 2d | 5d | 0d |  | KeyUser | 16h |  | 16 | 16 |  | 0% | 0% |  |
| 79 | 1.7.2.5 | Organização e Transportes das requests para PRD |  | 1d | 2016-09-26 | 2016-09-26 | 78 |  |  | 2016-10-03 | 2016-10-03 | 1d | 5d |  |  | Basis Cliente | 8h |  | 8 | 8 |  | 0% | 0% |  |
| 80 | 4.3.3.1 | Reunião de GO no GO |  | 0.5d | 2016-09-26 | 2016-09-26 | 78 |  |  | 2016-10-03 | 2016-10-03 | 0.5d | 5d | 0d |  | Gerente de Projeto | 4h |  | 4 | 4 |  | 0% | 0% |  |
| 81 | 1.7.3 | Termo de Aceite Fase 4 | milestone | 0d | 2016-09-26 | 2016-09-26 | 80 |  |  | 2016-10-03 | 2016-10-03 | 0d | 5d | 0d |  | Gerente de Projeto |  |  |  |  |  | 0% | 0% |  |
| 82 | 1.8 | **Fase 5 - GO-Live e Operação Assistida** |  | 4.5d | 2016-09-26 | 2016-10-03 |  |  |  | 2016-10-03 | 2016-10-03 | 1d | 1d |  |  |  | 4h |  | 4 | 4 |  | 0% | 0% |  |
| 83 | 1.8.1 | Arranque Produtivo - Go Live (liberar acesso para usuários finais) |  | 0.5d | 2016-09-26 | 2016-09-26 | 81 |  |  | 2016-10-03 | 2016-10-03 | 0.5d | 5d | 0d |  | Gerente de Projeto | 4h |  | 4 | 4 |  | 0% | 0% |  |
| 84 | 1.8.2 | Termo de Aceite Fase 5 - Encerramento | milestone | 0d | 2016-09-26 | 2016-09-26 | 83 |  |  | 2016-10-03 | 2016-10-03 | 0d | 5d | 4d |  | Gerente de Projeto |  |  |  |  |  | 0% | 0% |  |
| 85 | 1.8.3 | Suporte a produção pós Go Live | milestone, manual | 0d | 2016-10-03 | 2016-10-03 | 84 |  |  | 2016-10-03 | 2016-10-03 | 0d |  |  | start no earlier than 2016-10-03 | Marcelo Telles |  |  |  |  |  | 0% | 0% |  |
| 86 | 2 | **HRST_Cronograma SAP HCM Workforce** |  | 142d | 2016-03-15 A | 2016-10-03 |  | 5% | 135.3d | 2016-03-15 | 2016-10-12 | 152d | 1d |  |  |  | 2568h | 120h | 2,568 | 2,752 | 120 | 3% | 4% | 1,4 |
| 87 | 2.1 | **Fase 1 - Preparação do Projeto** |  | 14d | 2016-03-15 A | 2016-04-01 A |  | 100% |  | 2016-03-15 | 2016-04-01 | 14d |  |  |  |  | 120h | 120h | 120 | 112 | 120 | 71% | 100% | 1,4 |
| 88 | 2.1.1 | Kick-off |  | 1d | 2016-03-15 A | 2016-03-15 A |  | 100% |  | 2016-03-15 | 2016-03-15 | 1d |  |  | start no earlier than 2016-03-15 | Gerente de Projeto | 8h | 8h | 8 | 8 | 8 | 100% | 100% |  |
| 89 | 2.1.2 | Elaboração do Plano de Comunicação |  | 1d | 2016-03-16 A | 2016-03-16 A | 88 | 100% |  | 2016-03-16 | 2016-03-16 | 1d |  |  |  | Gerente de Projeto | 8h | 8h | 8 | 8 | 8 | 100% | 100% |  |
| 90 | 2.1.3 | Definição da Metodologia de Trabalho |  | 1d | 2016-03-17 A | 2016-03-17 A | 89 | 100% |  | 2016-03-17 | 2016-03-17 | 1d |  |  |  | Gerente de Projeto | 8h | 8h | 8 | 8 | 8 | 100% | 100% |  |
| 91 | 2.1.4 | Definição do Programa de Reuniões |  | 1d | 2016-03-18 A | 2016-03-18 A | 90 | 100% |  | 2016-03-18 | 2016-03-18 | 1d |  |  |  | Gerente de Projeto | 8h | 8h | 8 | 8 | 8 | 100% | 100% |  |
| 92 | 2.1.5 | Documentação de Planejamento |  | 5d | 2016-03-21 A | 2016-03-25 A | 91 | 100% |  | 2016-03-21 | 2016-03-24 | 4d |  |  |  | Gerente de Projeto | 40h | 40h | 40 | 32 | 40 | 100% | 100% |  |
| 93 | 2.1.6 | Elaboração do Project Charter |  | 2d | 2016-03-25 A | 2016-03-28 A | 92 | 100% |  | 2016-03-25 | 2016-03-28 | 2d |  |  |  | Gerente de Projeto | 16h | 16h | 16 | 16 | 16 | 100% | 100% |  |
| 94 | 2.1.7 | Elaboração do Plano de Projecto |  | 2d | 2016-03-29 A | 2016-03-30 A | 93 | 100% |  | 2016-03-29 | 2016-03-30 | 2d |  |  |  | Gerente de Projeto | 16h | 16h | 16 | 16 | 16 | 0% | 100% |  |
| 95 | 2.1.8 | Cronograma Detalhado do Projeto |  | 2d | 2016-03-31 A | 2016-04-01 A | 94 | 100% |  | 2016-03-31 | 2016-04-01 | 2d |  |  |  | Gerente de Projeto | 16h | 16h | 16 | 16 | 16 | 0% | 100% |  |
| 96 | 2.2 | Termo de Aceite Fase 1 | milestone | 0d | 2016-04-01 A | 2016-04-01 | 95 | 75% | 0d | 2016-04-01 | 2016-04-01 | 0d | 129d |  |  | Gerente de Projeto |  |  |  |  |  | 0% | 75% |  |

| ID | WBS | Task | Type | Duration | Start | Finish | Predecessors | Baseline start | Baseline finish | Baseline duration | Total slack | Free slack | Constraint | Resources | Work | Cost | Baseline cost | % Planejado | % Realizado |
| --- | --- | --- | --- | --- | --- | --- | --- | --- | --- | --- | --- | --- | --- | --- | --- | --- | --- | --- | --- |
| 97 | 2.3 | **Fase 2 - Análise e Desenho do Projeto (BBP)** |  | 23d | 2016-03-28 | 2016-04-29 |  | 2016-03-31 | 2016-05-06 | 27d | 13d |  |  |  | 464h | 464 | 600 | 0% | 0% |
| 98 | 2.3.1 | **Proposta do novo processo TO BE (BBP)** |  | 23d | 2016-03-28 | 2016-04-29 |  | 2016-04-07 | 2016-04-29 | 17d | 13d |  |  |  | 384h | 384 | 320 | 0% | 0% |
| 99 | 2.3.1.1 | Folha de Pagamento |  | 10d | 2016-03-28 | 2016-04-11 |  | 2016-04-07 | 2016-04-20 | 10d | 119d | 0d | start no earlier than 2016-03-28 | Paloma Oliveira | 80h | 80 | 80 | 0% | 0% |
| 100 | 2.3.1.2 | Gestão de Tempos |  | 18d | 2016-04-04 | 2016-04-29 |  | 2016-04-11 | 2016-04-22 | 10d | 8d | 0d | finish no earlier than 2016-04-29 | Gustavo Barison | 144h | 144 | 80 | 0% | 0% |
| 101 | 2.3.1.3 | Gestão de Beneficios |  | 5d | 2016-04-12 | 2016-04-18 | 99 | 2016-04-21 | 2016-04-27 | 5d | 119d |  |  | Paloma Oliveira, Carolina Xavier | 40h | 40 | 40 | 0% | 0% |
| 102 | 2.3.1.4 | Administração Pessoal |  | 5d | 2016-03-28 | 2016-04-01 |  | 2016-04-11 | 2016-04-15 | 5d | 114d | 0d | start no earlier than 2016-03-28 | Carolina Xavier | 40h | 40 | 40 | 0% | 0% |
| 103 | 2.3.1.5 | Estrutura Organizacional |  | 10d | 2016-04-04 | 2016-04-18 | 102 | 2016-04-18 | 2016-04-29 | 10d | 114d | 0d |  | Carolina Xavier | 80h | 80 | 80 | 0% | 0% |
| 104 | 2.3.2 | Aprovação do Business Blueprint |  | 5d | 2016-04-19 | 2016-04-26 | 103 | 2016-05-02 | 2016-05-06 | 5d | 114d |  |  | KeyUser | 40h | 40 | 40 | 0% | 0% |
| 105 | 2.3.3 | Apresentação do Desenho Conceptual e Gap Analysis |  | 2d | 2016-04-19 | 2016-04-20 | 103 | 2016-05-02 | 2016-05-03 | 2d | 114d | 0d |  | Gerente de Projeto | 16h | 16 | 16 | 0% | 0% |
| 106 | 2.3.4 | Validação dos Resultados da Fase |  | 1d | 2016-04-22 | 2016-04-22 | 105 | 2016-05-04 | 2016-05-04 | 1d | 114d | 0d |  | Gerente de Projeto | 8h | 8 | 8 | 0% | 0% |
| 107 | 2.3.5 | Ajustamentos e Optimização do Desenho Conceptual |  | 2d | 2016-04-25 | 2016-04-26 | 106 | 2016-05-05 | 2016-05-06 | 2d | 114d |  |  | Gerente de Projeto | 16h | 16 | 16 | 0% | 0% |
| 108 | 2.4 | Termo de Aceite Fase 2 | milestone | 0d | 2016-04-29 | 2016-04-29 | 100 | 2016-05-06 | 2016-05-06 | 0d | 8d | 0d |  | Gerente de Projeto |  |  |  | 0% | 0% |
| 109 | 2.5 | **Fase 3 - Realização da Parametrização e Desenvolvimentos** |  | 85d | 2016-05-02 | 2016-08-26 |  | 2016-05-09 | 2016-09-12 | 91d | 8d |  |  |  | 1808h | 1,808 | 1,816 | 0% | 0% |
| 110 | 2.5.1 | **Desenvolvimentos Especificos do Negócio** |  | 15d | 2016-05-02 | 2016-05-20 |  | 2016-05-09 | 2016-05-27 | 15d | 8d |  |  |  | 352h | 352 | 352 | 0% | 0% |
| 111 | 2.5.1.1 | **Folha de Pagamento** |  | 10d | 2016-05-02 | 2016-05-13 |  | 2016-05-09 | 2016-05-20 | 10d | 13d |  |  |  | 80h | 80 | 80 | 0% | 0% |
| 112 | 2.5.1.1.1 | Especificação Funcional |  | 10d | 2016-05-02 | 2016-05-13 | 108 | 2016-05-09 | 2016-05-20 | 10d | 13d | 0d |  | Paloma Oliveira | 80h | 80 | 80 | 0% | 0% |
| 113 | 2.5.1.2 | **Gestão de Tempos** |  | 10d | 2016-05-02 | 2016-05-13 |  | 2016-05-09 | 2016-05-20 | 10d | 11d |  |  |  | 80h | 80 | 80 | 0% | 0% |
| 114 | 2.5.1.2.1 | Especificação Funcional |  | 10d | 2016-05-02 | 2016-05-13 | 108 | 2016-05-09 | 2016-05-20 | 10d | 11d | 0d |  | Gustavo Barison | 80h | 80 | 80 | 0% | 0% |
| 115 | 2.5.1.3 | **Gestão de Beneficios (FOPAG)** |  | 5d | 2016-05-02 | 2016-05-06 |  | 2016-05-09 | 2016-05-13 | 5d | 38d |  |  |  | 40h | 40 | 40 | 0% | 0% |
| 116 | 2.5.1.3.1 | Especificação Funcional |  | 5d | 2016-05-02 | 2016-05-06 | 108 | 2016-05-09 | 2016-05-13 | 5d | 38d | 0d |  | Joana Ragnelli | 40h | 40 | 40 | 0% | 0% |
| 117 | 2.5.1.4 | **Administração Pessoal** |  | 5d | 2016-05-02 | 2016-05-06 |  | 2016-05-09 | 2016-05-13 | 5d | 8d |  |  |  | 40h | 40 | 40 | 0% | 0% |
| 118 | 2.5.1.4.1 | Especificação Funcional |  | 5d | 2016-05-02 | 2016-05-06 | 108 | 2016-05-09 | 2016-05-13 | 5d | 8d | 0d |  | Carolina Xavier | 40h | 40 | 40 | 0% | 0% |
| 119 | 2.5.1.5 | **Portal WebSempre** |  | 10d | 2016-05-09 | 2016-05-20 |  | 2016-05-16 | 2016-05-27 | 10d | 8d |  |  |  | 112h | 112 | 112 | 0% | 0% |
| 120 | 2.5.1.5.1 | Especificação Funcional PY |  | 3d | 2016-05-16 | 2016-05-18 | 112 | 2016-05-23 | 2016-05-25 | 3d | 13d | 0d |  | Paloma Oliveira | 24h | 24 | 24 | 0% | 0% |
| 121 | 2.5.1.5.2 | Especificação Funcional PA |  | 3d | 2016-05-09 | 2016-05-11 | 118 | 2016-05-16 | 2016-05-18 | 3d | 8d | 0d |  | Carolina Xavier | 24h | 24 | 24 | 0% | 0% |
| 122 | 2.5.1.5.3 | Especificação Funcional BN |  | 3d | 2016-05-09 | 2016-05-11 | 116 | 2016-05-16 | 2016-05-18 | 3d | 38d | 0d |  | Joana Ragnelli | 24h | 24 | 24 | 0% | 0% |
| 123 | 2.5.1.5.4 | Especificação Funcional PT |  | 5d | 2016-05-16 | 2016-05-20 | 114 | 2016-05-23 | 2016-05-27 | 5d | 11d | 0d |  | Gustavo Barison | 40h | 40 | 40 | 0% | 0% |

| ID | WBS | Task | Type | Duration | Start | Finish | Predecessors | Baseline start | Baseline finish | Baseline duration | Total slack | Free slack | Constraint | Resources | Work | Cost | Baseline cost | % Planejado | % Realizado |
| --- | --- | --- | --- | --- | --- | --- | --- | --- | --- | --- | --- | --- | --- | --- | --- | --- | --- | --- | --- |
| 124 | 2.5.2 | **Parametrização do SAP Standard** |  | 50d | 2016-05-12 | 2016-07-20 |  | 2016-05-19 | 2016-07-27 | 50d | 8d | 0d |  |  | 1200h | 1,200 | 1,200 | 0% | 0% |
| 125 | 2.5.2.1 | Folha de Pagamento |  | 40d | 2016-05-19 | 2016-07-13 | 120 | 2016-05-26 | 2016-07-20 | 40d | 13d |  |  | Paloma Oliveira | 320h | 320 | 320 | 0% | 0% |
| 126 | 2.5.2.2 | Gestão de Tempos |  | 40d | 2016-05-23 | 2016-07-15 | 123 | 2016-05-30 | 2016-07-22 | 40d | 11d |  |  | Gustavo Barison | 320h | 320 | 320 | 0% | 0% |
| 127 | 2.5.2.3 | Gestão de Beneficios (FOPAG) |  | 10d | 2016-05-12 | 2016-05-25 | 122 | 2016-05-19 | 2016-06-01 | 10d | 38d | 0d |  | Joana Ragnelli | 80h | 80 | 80 | 0% | 0% |
| 128 | 2.5.2.4 | Gestão de Beneficios (PA) |  | 10d | 2016-05-26 | 2016-06-08 | 127 | 2016-06-02 | 2016-06-15 | 10d | 38d |  |  | Joana Ragnelli | 80h | 80 | 80 | 0% | 0% |
| 129 | 2.5.2.5 | Administração Pessoal |  | 40d | 2016-05-12 | 2016-07-06 | 121 | 2016-05-19 | 2016-07-13 | 40d | 8d | 0d |  | Carolina Xavier | 320h | 320 | 320 | 0% | 0% |
| 130 | 2.5.2.6 | Estrutura Organizacional |  | 10d | 2016-07-07 | 2016-07-20 | 129 | 2016-07-14 | 2016-07-27 | 10d | 8d |  |  | Carolina Xavier | 80h | 80 | 80 | 0% | 0% |
| 131 | 2.5.3 | Definição das Planilhas de Carga (Layout) |  | 3d | 2016-07-21 | 2016-07-25 | 124 | 2016-07-28 | 2016-08-01 | 3d | 8d | 0d | start no earlier than 2016-04-11 | Joana Ragnelli | 24h | 24 | 24 | 0% | 0% |
| 132 | 2.5.4 | Apresentação das cargas de dados necessárias |  | 1d | 2016-07-26 | 2016-07-26 | 131 | 2016-08-02 | 2016-08-03 | 2d | 8d | 0d |  | Joana Ragnelli | 8h | 8 | 16 | 0% | 0% |
| 133 | 2.5.5 | Definição e Desenho dos Perfis de Acesso |  | 2d | 2016-07-27 | 2016-07-28 | 132 | 2016-08-04 | 2016-08-05 | 2d | 8d | 0d |  | Joana Ragnelli | 16h | 16 | 16 | 0% | 0% |
| 134 | 2.5.6 | Desenvolvimento dos Perfis de Acesso |  | 5d | 2016-07-29 | 2016-08-04 | 133 | 2016-08-08 | 2016-08-12 | 5d | 42d |  |  | Basis HTB | 40h | 40 | 40 | 0% | 0% |
| 135 | 2.5.7 | Elaboração do Script de Testes Integrados |  | 3d | 2016-07-29 | 2016-08-02 | 133 | 2016-08-15 | 2016-08-17 | 3d | 8d | 0d |  | Joana Ragnelli | 24h | 24 | 24 | 0% | 0% |
| 136 | 2.5.8 | Execução do Testes Unitários (sem perfil de acesso) |  | 5d | 2016-08-03 | 2016-08-09 | 135 | 2016-08-18 | 2016-08-24 | 5d | 8d | 0d |  | Joana Ragnelli | 40h | 40 | 40 | 0% | 0% |
| 137 | 2.5.9 | Execução de Testes Integrados (com perfil de acesso) |  | 5d | 2016-08-10 | 2016-08-16 | 136 | 2016-08-25 | 2016-08-31 | 5d | 8d | 0d |  | Joana Ragnelli, KeyUser | 40h | 40 | 40 | 0% | 0% |
| 138 | 2.5.10 | Correção e otimização dos testes |  | 3d | 2016-08-17 | 2016-08-19 | 137 | 2016-09-01 | 2016-09-05 | 3d | 8d | 0d |  | Joana Ragnelli | 24h | 24 | 24 | 0% | 0% |
| 139 | 2.5.11 | Desenvolvimentos dos Manuais para EndUser (BPP) |  | 5d | 2016-08-22 | 2016-08-26 | 138 | 2016-09-06 | 2016-09-12 | 5d | 8d | 0d |  | Joana Ragnelli | 40h | 40 | 40 | 0% | 0% |
| 140 | 2.6 | Termo de Aceite Fase 3 | milestone | 0d | 2016-08-26 | 2016-08-26 | 139 | 2016-09-12 | 2016-09-12 | 0d | 26d |  |  | Gerente de Projeto |  |  |  | 0% | 0% |
| 141 | 2.7 | **Fase 4 - Preparação Final** |  | 18d | 2016-08-29 | 2016-09-21 |  | 2016-09-13 | 2016-10-12 | 22d | 8d |  |  |  | 172h | 172 | 220 | 0% | 0% |
| 142 | 2.7.1 | **Treinamento de Usuários Finais** |  | 9d | 2016-08-29 | 2016-09-08 |  | 2016-09-13 | 2016-09-23 | 9d | 8d |  |  |  | 72h | 72 | 72 | 0% | 0% |
| 143 | 2.7.1.1 | Preparação do Material de Treinamento |  | 5d | 2016-08-29 | 2016-09-02 | 139 | 2016-09-13 | 2016-09-19 | 5d | 8d | 0d |  | Joana Ragnelli | 40h | 40 | 40 | 0% | 0% |
| 144 | 2.7.1.2 | Preparação do Ambiente QAS 700 para Treinamento |  | 2d | 2016-09-05 | 2016-09-06 | 143 | 2016-09-20 | 2016-09-21 | 2d | 8d | 0d |  | Joana Ragnelli | 16h | 16 | 16 | 0% | 0% |
| 145 | 2.7.1.3 | Realização do Treinamento |  | 2d | 2016-09-07 | 2016-09-08 | 144 | 2016-09-22 | 2016-09-23 | 2d | 8d | 0d |  | Joana Ragnelli | 16h | 16 | 16 | 0% | 0% |
| 146 | 2.7.2 | **Plano de Cut-Over** |  | 9d | 2016-09-09 | 2016-09-21 |  | 2016-09-26 | 2016-10-12 | 13d | 8d |  |  |  | 100h | 100 | 148 | 0% | 0% |
| 147 | 2.7.2.1 | Definição do Plano de Cut-Over |  | 1d | 2016-09-09 | 2016-09-09 | 145 | 2016-09-26 | 2016-09-26 | 1d | 8d | 0d |  | Joana Ragnelli | 8h | 8 | 8 | 0% | 0% |
| 148 | 2.7.2.2 | Elaboração das planilhas de carga de dados (LSMW) |  | 3d | 2016-09-12 | 2016-09-14 | 147 | 2016-09-27 | 2016-09-29 | 3d | 8d | 0d |  | KeyUser | 24h | 24 | 24 | 0% | 0% |
| 149 | 2.7.2.3 | Execução das cargas de dados |  | 3d | 2016-09-15 | 2016-09-19 | 148 | 2016-09-30 | 2016-10-06 | 5d | 8d | 0d |  | KeyUser; Joana Ragnelli | 48h | 48 | 80 | 0% | 0% |
| 150 | 2.7.2.4 | Validação de dados carregados / migrados / transferidos |  | 1d | 2016-09-20 | 2016-09-20 | 149 | 2016-10-07 | 2016-10-10 | 2d | 8d | 0d |  | KeyUser | 8h | 8 | 16 | 0% | 0% |
| 151 | 2.7.2.5 | Organização e Transportes das requests para PRD |  | 1d | 2016-09-21 | 2016-09-21 | 150 | 2016-10-11 | 2016-10-12 | 2d | 8d |  |  | Basis Cliente | 8h | 8 | 16 | 0% | 0% |
| 152 | 4.3.3.1 | Reunião de GO no GO |  | 0.5d | 2016-09-21 | 2016-09-21 | 150 | 2016-10-11 | 2016-10-11 | 0.5d | 8d | 0d |  | Gerente de Projeto | 4h | 4 | 4 | 0% | 0% |
| 153 | 2.8 | Termo de Aceite Fase 4 | milestone | 0d | 2016-09-21 | 2016-09-21 | 152 | 2016-10-11 | 2016-10-11 | 0d | 8d | 0d |  | Gerente de Projeto |  |  |  | 0% | 0% |

| ID | WBS | Task | Type | Duration | Start | Finish | Predecessors | Baseline start | Baseline finish | Baseline duration | Total slack | Free slack | Constraint | Resources | Work | Cost | Baseline cost | % Planejado | % Realizado |
| --- | --- | --- | --- | --- | --- | --- | --- | --- | --- | --- | --- | --- | --- | --- | --- | --- | --- | --- | --- |
| 154 | 2.9 | **Fase 5 - GO-Live e Operação Assistida** |  | 0.5d | 2016-09-21 | 2016-09-21 |  | 2016-10-03 | 2016-10-11 | 7d | 8d |  |  |  | 4h | 4 | 4 | 0% | 0% |
| 155 | 2.9.1 | Arranque Produtivo - Go Live (liberar acesso para usuários finais) |  | 0.5d | 2016-09-21 | 2016-09-21 | 153 | 2016-10-11 | 2016-10-11 | 0.5d | 8d | 0d |  | Gerente de Projeto | 4h | 4 | 4 | 0% | 0% |
| 156 | 2.10 | Termo de Aceite Fase 5 - Encerramento | milestone | 0d | 2016-09-21 | 2016-09-21 | 155 | 2016-10-11 | 2016-10-11 | 0d | 8d |  |  | Gerente de Projeto |  |  |  | 0% | 0% |
| 157 | 2.11 | Suporte a produção pós Go Live | milestone, manual | 0d | 2016-10-03 | 2016-10-03 |  | 2016-10-03 | 2016-10-03 | 0d |  |  | start no earlier than 2016-10-03 | Marcelo Telles |  |  |  | 0% | 0% |
| 158 | 3 | **HRST_Cronograma SuccessFactors** |  | 125d | 2016-04-11 | 2016-10-03 |  | 2016-04-11 | 2016-10-03 | 126d | 0d |  |  |  | 2704h | 2,704 | 2,736 | 0% | 0% |
| 159 | 3.1 | **Onda 1 - EP, PM, GM e CDP** |  | 94d | 2016-04-11 | 2016-08-19 |  | 2016-04-11 | 2016-08-18 | 94d | 0d |  |  |  | 920h | 920 | 920 | 0% | 0% |
| 160 | 3.1.1 | **Fase 1 - Preparar** |  | 28d | 2016-04-11 | 2016-05-19 |  | 2016-04-11 | 2016-05-18 | 28d | 0d |  |  |  | 248h | 248 | 248 | 0% | 0% |
| 161 | 3.1.1.1 | Plataforma |  | 5d | 2016-04-11 | 2016-04-15 |  | 2016-04-11 | 2016-04-15 | 5d | 0d |  | start no earlier than 2016-04-11 | Consultor SFSF | 40h | 40 | 40 | 0% | 0% |
| 162 | 3.1.1.2 | **EmployeeProfile** |  | 5d | 2016-04-18 | 2016-04-25 |  | 2016-04-18 | 2016-04-22 | 5d | 0d |  |  |  | 40h | 40 | 40 | 0% | 0% |
| 163 | 3.1.1.2.1 | Dados Gerais do Empregado |  | 2d | 2016-04-18 | 2016-04-19 | 161 | 2016-04-18 | 2016-04-19 | 2d | 0d |  |  | Consultor SFSF | 16h | 16 | 16 | 0% | 0% |
| 164 | 3.1.1.2.2 | Backgrounds do Empregado |  | 2d | 2016-04-20 | 2016-04-22 | 163 | 2016-04-20 | 2016-04-21 | 2d | 0d |  |  | Consultor SFSF | 16h | 16 | 16 | 0% | 0% |
| 165 | 3.1.1.2.3 | Visões do Perfil |  | 1d | 2016-04-25 | 2016-04-25 | 164 | 2016-04-22 | 2016-04-22 | 1d | 0d |  |  | Consultor SFSF | 8h | 8 | 8 | 0% | 0% |
| 166 | 3.1.1.3 | Metas |  | 5d | 2016-04-26 | 2016-05-02 | 165 | 2016-04-25 | 2016-04-29 | 5d | 0d |  |  | Consultor SFSF | 40h | 40 | 40 | 0% | 0% |
| 167 | 3.1.1.4 | **Avaliação de Desempenho / Competências** |  | 8d | 2016-05-03 | 2016-05-12 |  | 2016-05-02 | 2016-05-11 | 8d | 0d |  |  |  | 64h | 64 | 64 | 0% | 0% |
| 168 | 3.1.1.4.1 | Formulários de Avaliação |  | 5d | 2016-05-03 | 2016-05-09 | 166 | 2016-05-02 | 2016-05-06 | 5d | 0d |  |  | Consultor SFSF | 40h | 40 | 40 | 0% | 0% |
| 169 | 3.1.1.4.2 | Cargos / Competências |  | 3d | 2016-05-10 | 2016-05-12 | 168 | 2016-05-09 | 2016-05-11 | 3d | 0d |  |  | Consultor SFSF | 24h | 24 | 24 | 0% | 0% |
| 170 | 3.1.1.5 | Carreira e Sucessão |  | 5d | 2016-05-13 | 2016-05-19 | 169 | 2016-05-12 | 2016-05-18 | 5d | 0d |  |  | Consultor SFSF | 40h | 40 | 40 | 0% | 0% |
| 171 | 3.1.1.6 | Integração |  | 3d | 2016-04-26 | 2016-04-28 | 165 | 2016-04-25 | 2016-04-27 | 3d | 15d | 0d |  | ABAP SFSF | 24h | 24 | 24 | 0% | 0% |
| 172 | 3.1.1.7 | Aceite Fase 1 | milestone | 0d | 2016-05-19 | 2016-05-19 | 170, 171 | 2016-05-18 | 2016-05-18 | 0d | 0d |  |  | KeyUser |  |  |  | 0% | 0% |
| 173 | 3.1.2 | **Fase 2 - Realizar** |  | 60d | 2016-04-29 | 2016-07-21 |  | 2016-04-28 | 2016-07-20 | 60d | 31d |  |  |  | 480h | 480 | 480 | 0% | 0% |
| 174 | 3.1.2.1 | Plataforma |  | 5d | 2016-05-20 | 2016-05-26 | 170 | 2016-05-19 | 2016-05-25 | 5d | 31d | 0d |  | Consultor SFSF | 40h | 40 | 40 | 0% | 0% |
| 175 | 3.1.2.2 | EmployeeProfile |  | 5d | 2016-05-27 | 2016-06-02 | 174 | 2016-05-26 | 2016-06-01 | 5d | 31d | 0d |  | Consultor SFSF | 40h | 40 | 40 | 0% | 0% |
| 176 | 3.1.2.3 | Metas |  | 10d | 2016-06-03 | 2016-06-16 | 175 | 2016-06-02 | 2016-06-15 | 10d | 31d | 0d |  | Consultor SFSF | 80h | 80 | 80 | 0% | 0% |
| 177 | 3.1.2.4 | Avaliação de Desempenho |  | 15d | 2016-06-17 | 2016-07-07 | 176 | 2016-06-16 | 2016-07-06 | 15d | 31d | 0d |  | Consultor SFSF | 120h | 120 | 120 | 0% | 0% |
| 178 | 3.1.2.5 | Carreira e Sucessão |  | 10d | 2016-07-08 | 2016-07-21 | 177 | 2016-07-07 | 2016-07-20 | 10d | 31d | 0d |  | Consultor SFSF | 80h | 80 | 80 | 0% | 0% |
| 179 | 3.1.2.6 | Integração |  | 15d | 2016-04-29 | 2016-05-19 | 171 | 2016-04-28 | 2016-05-18 | 15d | 76d | 45d |  | ABAP SFSF | 120h | 120 | 120 | 0% | 0% |
| 180 | 3.1.2.7 | Aceite Fase 2 | milestone | 0d | 2016-07-21 | 2016-07-21 | 178, 179 | 2016-07-20 | 2016-07-20 | 0d | 31d | 0d |  | KeyUser |  |  |  | 0% | 0% |

| ID | WBS | Task | Type | Duration | Start | Finish | Predecessors | Baseline start | Baseline finish | Baseline duration | Total slack | Free slack | Resources | Work | Cost | Baseline cost | % Planejado | % Realizado |
| --- | --- | --- | --- | --- | --- | --- | --- | --- | --- | --- | --- | --- | --- | --- | --- | --- | --- | --- |
| 181 | 3.1.3 | **Fase 3 - Verificar** |  | 21d | 2016-07-22 | 2016-08-19 |  | 2016-07-21 | 2016-08-18 | 21d | 31d |  |  | 192h | 192 | 192 | 0% | 0% |
| 182 | 3.1.3.1 | Plataforma |  | 2d | 2016-07-22 | 2016-07-25 | 180 | 2016-07-21 | 2016-07-22 | 2d | 31d | 0d | Consultor SFSF | 16h | 16 | 16 | 0% | 0% |
| 183 | 3.1.3.2 | EmployeeProfile |  | 2d | 2016-07-26 | 2016-07-27 | 182 | 2016-07-25 | 2016-07-26 | 2d | 31d | 0d | Consultor SFSF | 16h | 16 | 16 | 0% | 0% |
| 184 | 3.1.3.3 | Metas |  | 3d | 2016-07-28 | 2016-08-01 | 183 | 2016-07-27 | 2016-07-29 | 3d | 31d | 0d | Consultor SFSF | 24h | 24 | 24 | 0% | 0% |
| 185 | 3.1.3.4 | Avaliação de Desempenho |  | 7d | 2016-08-02 | 2016-08-10 | 184 | 2016-08-01 | 2016-08-09 | 7d | 31d | 0d | Consultor SFSF | 56h | 56 | 56 | 0% | 0% |
| 186 | 3.1.3.5 | Carreira e Sucessão |  | 3d | 2016-08-11 | 2016-08-15 | 185 | 2016-08-10 | 2016-08-12 | 3d | 31d | 0d | Consultor SFSF | 24h | 24 | 24 | 0% | 0% |
| 187 | 3.1.3.6 | **Integração** |  | 4d | 2016-08-16 | 2016-08-19 |  | 2016-08-15 | 2016-08-18 | 4d | 31d |  |  | 32h | 32 | 32 | 0% | 0% |
| 188 | 3.1.3.6.1 | Carga |  | 1d | 2016-08-16 | 2016-08-16 | 186 | 2016-08-15 | 2016-08-15 | 1d | 31d | 0d | ABAP SFSF | 8h | 8 | 8 | 0% | 0% |
| 189 | 3.1.3.6.2 | Admissão |  | 1d | 2016-08-17 | 2016-08-17 | 188 | 2016-08-16 | 2016-08-16 | 1d | 31d | 0d | ABAP SFSF | 8h | 8 | 8 | 0% | 0% |
| 190 | 3.1.3.6.3 | Demissão |  | 1d | 2016-08-18 | 2016-08-18 | 189 | 2016-08-17 | 2016-08-17 | 1d | 31d | 0d | ABAP SFSF | 8h | 8 | 8 | 0% | 0% |
| 191 | 3.1.3.6.4 | Movimentação |  | 1d | 2016-08-19 | 2016-08-19 | 190 | 2016-08-18 | 2016-08-18 | 1d | 31d | 0d | ABAP SFSF | 8h | 8 | 8 | 0% | 0% |
| 192 | 3.1.3.7 | Elaboração do Material de Treinamento |  | 3d | 2016-08-16 | 2016-08-18 | 186 | 2016-08-15 | 2016-08-17 | 3d | 32d |  | Consultor SFSF II | 24h | 24 | 24 | 0% | 0% |
| 193 | 3.1.3.8 | Aceite Fase 3 | milestone | 0d | 2016-08-19 | 2016-08-19 | 186, 191 | 2016-08-18 | 2016-08-18 | 0d | 31d |  | KeyUser |  |  |  | 0% | 0% |
| 194 | 3.2 | **Onda 2 - Compensation, LMS e Jam** |  | 97d | 2016-05-20 | 2016-10-03 |  | 2016-05-19 | 2016-10-03 | 98d | 0d |  |  | 1784h | 1,784 | 1,816 | 0% | 0% |
| 195 | 3.2.1 | **Fase 1 - Preparar** |  | 25d | 2016-05-20 | 2016-06-23 |  | 2016-05-19 | 2016-06-22 | 25d | 0d |  |  | 360h | 360 | 360 | 0% | 0% |
| 196 | 3.2.1.1 | **Compensation** |  | 25d | 2016-05-20 | 2016-06-23 |  | 2016-05-19 | 2016-06-22 | 25d | 0d |  |  | 200h | 200 | 200 | 0% | 0% |
| 197 | 3.2.1.1.1 | Pagamento Fixo |  | 10d | 2016-05-20 | 2016-06-02 | 172 | 2016-05-19 | 2016-06-01 | 10d | 0d |  | Consultor SFSF CM | 80h | 80 | 80 | 0% | 0% |
| 198 | 3.2.1.1.2 | Pagamento Variável |  | 10d | 2016-06-03 | 2016-06-16 | 197 | 2016-06-02 | 2016-06-15 | 10d | 0d |  | Consultor SFSF CM | 80h | 80 | 80 | 0% | 0% |
| 199 | 3.2.1.1.3 | Integração |  | 5d | 2016-06-17 | 2016-06-23 | 198 | 2016-06-16 | 2016-06-22 | 5d | 0d |  | ABAP SFSF | 40h | 40 | 40 | 0% | 0% |
| 200 | 3.2.1.2 | LMS |  | 15d | 2016-05-20 | 2016-06-09 | 170 | 2016-05-19 | 2016-06-08 | 15d | 5d | 0d | Consultor SFSF LMS | 120h | 120 | 120 | 0% | 0% |
| 201 | 3.2.1.3 | Jam |  | 5d | 2016-06-10 | 2016-06-16 | 200 | 2016-06-09 | 2016-06-15 | 5d | 5d |  | Consultor SFSF LMS | 40h | 40 | 40 | 0% | 0% |
| 202 | 3.2.1.4 | Aceite Fase 1 | milestone | 0d | 2016-06-23 | 2016-06-23 | 199, 201 | 2016-06-22 | 2016-06-22 | 0d | 0d |  | KeyUser |  |  |  | 0% | 0% |
| 203 | 3.2.2 | **Fase 2 - Realizar** |  | 40d | 2016-06-24 | 2016-08-18 |  | 2016-06-23 | 2016-08-17 | 40d | 0d |  |  | 720h | 720 | 720 | 0% | 0% |
| 204 | 3.2.2.1 | **Compensation** |  | 40d | 2016-06-24 | 2016-08-18 |  | 2016-06-23 | 2016-08-17 | 40d | 0d |  |  | 440h | 440 | 440 | 0% | 0% |
| 205 | 3.2.2.1.1 | Pagamento Fixo |  | 20d | 2016-06-24 | 2016-07-21 | 202 | 2016-06-23 | 2016-07-20 | 20d | 0d |  | Consultor SFSF CM | 160h | 160 | 160 | 0% | 0% |
| 206 | 3.2.2.1.2 | Pagamento Variável |  | 20d | 2016-07-22 | 2016-08-18 | 205 | 2016-07-21 | 2016-08-17 | 20d | 0d |  | Consultor SFSF CM | 160h | 160 | 160 | 0% | 0% |
| 207 | 3.2.2.1.3 | Integração |  | 15d | 2016-06-24 | 2016-07-14 | 199 | 2016-06-23 | 2016-07-13 | 15d | 25d |  | ABAP SFSF | 120h | 120 | 120 | 0% | 0% |
| 208 | 3.2.2.2 | LMS |  | 30d | 2016-06-24 | 2016-08-04 | 202 | 2016-06-23 | 2016-08-03 | 30d | 5d | 0d | Consultor SFSF LMS | 240h | 240 | 240 | 0% | 0% |
| 209 | 3.2.2.3 | Jam |  | 5d | 2016-08-05 | 2016-08-11 | 208 | 2016-08-04 | 2016-08-10 | 5d | 5d |  | Consultor SFSF LMS | 40h | 40 | 40 | 0% | 0% |
| 210 | 3.2.2.4 | Aceite Fase 2 | milestone | 0d | 2016-08-18 | 2016-08-18 | 206, 207, 208, 209 | 2016-08-17 | 2016-08-17 | 0d | 0d |  | KeyUser |  |  |  | 0% | 0% |

| ID | WBS | Task | Type | Duration | Start | Finish | Predecessors | Baseline start | Baseline finish | Baseline duration | Total slack | Free slack | Resources | Work | Cost | Baseline cost | % Planejado | % Realizado |
| --- | --- | --- | --- | --- | --- | --- | --- | --- | --- | --- | --- | --- | --- | --- | --- | --- | --- | --- |
| 211 | 3.2.3 | **Fase 3 - Verificar** |  | 26d | 2016-08-19 | 2016-09-23 |  | 2016-08-18 | 2016-09-22 | 26d | 0d |  |  | 512h | 512 | 512 | 0% | 0% |
| 212 | 3.2.3.1 | **Compensation** |  | 22d | 2016-08-19 | 2016-09-19 |  | 2016-08-18 | 2016-09-16 | 22d | 0d |  |  | 256h | 256 | 256 | 0% | 0% |
| 213 | 3.2.3.1.1 | Pagamento Fixo |  | 11d | 2016-08-19 | 2016-09-02 | 210 | 2016-08-18 | 2016-09-01 | 11d | 0d |  | Consultor SFSF CM | 88h | 88 | 88 | 0% | 0% |
| 214 | 3.2.3.1.2 | Pagamento Variável |  | 11d | 2016-09-05 | 2016-09-19 | 213 | 2016-09-02 | 2016-09-16 | 11d | 0d |  | Consultor SFSF CM | 88h | 88 | 88 | 0% | 0% |
| 215 | 3.2.3.1.3 | Integração |  | 10d | 2016-08-19 | 2016-09-01 | 210 | 2016-08-18 | 2016-08-31 | 10d | 12d |  | ABAP SFSF | 80h | 80 | 80 | 0% | 0% |
| 216 | 3.2.3.2 | LMS |  | 15d | 2016-08-19 | 2016-09-08 | 210 | 2016-08-18 | 2016-09-07 | 15d | 7d | 0d | Consultor SFSF LMS | 120h | 120 | 120 | 0% | 0% |
| 217 | 3.2.3.3 | Jam |  | 5d | 2016-09-09 | 2016-09-15 | 216 | 2016-09-08 | 2016-09-14 | 5d | 12d |  | Consultor SFSF LMS | 40h | 40 | 40 | 0% | 0% |
| 218 | 3.2.3.4 | Elaboração do Material de Treinamento |  | 4d | 2016-09-20 | 2016-09-23 | 214, 215, 216 | 2016-09-19 | 2016-09-22 | 4d | 0d |  | Consultor SFSF CM; Consultor SFSF II; Consultor SFSF LMS | 96h | 96 | 96 | 0% | 0% |
| 219 | 3.2.3.5 | Aceite Fase 3 | milestone | 0d | 2016-09-23 | 2016-09-23 | 214, 215, 216, 218 | 2016-09-22 | 2016-09-22 | 0d | 0d |  | KeyUser |  |  |  | 0% | 0% |
| 220 | 3.2.4 | **Fase 4 - Lançar** |  | 6d | 2016-09-26 | 2016-10-03 |  | 2016-09-23 | 2016-10-03 | 7d | 0d |  |  | 192h | 192 | 224 | 0% | 0% |
| 221 | 3.2.4.1 | **Transporte das Configurações Funcionais** |  | 6d | 2016-09-26 | 2016-10-03 |  | 2016-09-23 | 2016-10-03 | 7d | 0d |  |  | 160h | 160 | 184 | 0% | 0% |
| 222 | 3.2.4.1.1 | Plataforma |  | 1d | 2016-09-26 | 2016-09-26 | 219 | 2016-09-23 | 2016-09-23 | 1d | 0d |  | Consultor SFSF | 8h | 8 | 8 | 0% | 0% |
| 223 | 3.2.4.1.2 | EmployeeProfile |  | 1d | 2016-09-27 | 2016-09-27 | 222 | 2016-09-26 | 2016-09-26 | 1d | 0d |  | Consultor SFSF | 8h | 8 | 8 | 0% | 0% |
| 224 | 3.2.4.1.3 | Metas |  | 2d | 2016-09-28 | 2016-09-29 | 223 | 2016-09-27 | 2016-09-28 | 2d | 0d |  | Consultor SFSF | 16h | 16 | 16 | 0% | 0% |
| 225 | 3.2.4.1.4 | Avaliação de Desempenho |  | 2d | 2016-09-30 | 2016-10-03 | 224 | 2016-09-29 | 2016-09-30 | 2d | 0d |  | Consultor SFSF | 16h | 16 | 16 | 0% | 0% |
| 226 | 3.2.4.1.5 | Carreira e Sucessão |  | 2d | 2016-09-30 | 2016-10-03 | 224 | 2016-09-29 | 2016-09-30 | 2d | 0d |  | Consultor SFSF II | 16h | 16 | 16 | 0% | 0% |
| 227 | 3.2.4.1.6 | Compensation |  | 4d | 2016-09-28 | 2016-10-03 | 223 | 2016-09-27 | 2016-10-03 | 5d | 0d |  | Consultor SFSF CM | 32h | 32 | 40 | 0% | 0% |
| 228 | 3.2.4.1.7 | LMS |  | 4d | 2016-09-28 | 2016-10-03 | 223 | 2016-09-27 | 2016-10-03 | 5d | 0d |  | Consultor SFSF LMS | 32h | 32 | 40 | 0% | 0% |
| 229 | 3.2.4.1.8 | Jam |  | 4d | 2016-09-28 | 2016-10-03 | 223 | 2016-09-27 | 2016-10-03 | 5d | 0d |  | Consultor SFSF | 32h | 32 | 40 | 0% | 0% |
| 230 | 3.2.4.2 | **Transporte dos Desenvolvimentos ABAP/PI** |  | 4d | 2016-09-28 | 2016-10-03 |  | 2016-09-27 | 2016-10-03 | 5d | 0d |  |  | 32h | 32 | 40 | 0% | 0% |
| 231 | 3.2.4.2.1 | EmployeeProfile |  | 3d | 2016-09-28 | 2016-09-30 | 223 | 2016-09-27 | 2016-09-29 | 3d | 0d |  | ABAP SFSF | 24h | 24 | 24 | 0% | 0% |
| 232 | 3.2.4.2.2 | Compensation |  | 1d | 2016-10-03 | 2016-10-03 | 231 | 2016-09-30 | 2016-10-03 | 2d | 0d |  | ABAP SFSF | 8h | 8 | 16 | 0% | 0% |
| 233 | 3.2.4.3 | Go-Live | milestone | 0d | 2016-10-03 | 2016-10-03 | 221 | 2016-10-03 | 2016-10-03 | 0d | 0d |  | KeyUser |  |  |  | 0% | 0% |
| 234 | 3.2.4.4 | Operação Assistida | milestone | 0d | 2016-10-03 | 2016-10-03 | 233 | 2016-10-03 | 2016-10-03 | 0d | 0d |  | ABAP SFSF; Consultor SFSF; Consultor SFSF CM; Consultor SFSF LMS |  |  |  | 0% | 0% |
